# 简语人力资源

Schedule from MS Project, 2018-11-19 to 2019-01-30, costs in ¥, A marks actual dates.

## Calendars

- 标准: Mon-Fri 08:00-12:00, 13:00-17:00; Sat-Sun off.

## Resources

| Resource | Rate |
| --- | --- |
| 项目经理 | 20 |
| UI设计人员 | 20 |
| 测试人员 | 20 |
| 前端开发人员1 | 20 |
| 后台开发人员1 | 20 |
| 前端开发人员2 | 20 |
| 后台开发人员2 | 20 |
| 数据库设计人员 | 20 |
| 设备 | 10 |

## Schedule

| ID | WBS | Task | Type | Duration | Start | Finish | Predecessors | Complete | Remaining | Actual start | Actual finish | Total slack | Resources | Work | Actual work | Cost | Actual cost |
| --- | --- | --- | --- | --- | --- | --- | --- | --- | --- | --- | --- | --- | --- | --- | --- | --- | --- |
| 1 | 1 | **<执行与监控>** |  | 53d | 2018-11-19 A | 2019-01-30 | 56 | 75% | 13.03d |  |  | 0d |  | 552h | 396h | 10,240 | 7,360 |
| 2 | 1.1 | 组建项目团队 | manual | 1d | 2018-11-19 | 2018-11-19 |  |  |  |  |  |  | 项目经理 | 8h |  | 160 |  |
| 3 | 1.2 | **简语系统设计** |  | 45d | 2018-11-19 | 2019-01-18 | 56, 62, 2 | 100% |  | 2018-11-21 | 2018-12-24 |  |  | 396h | 396h | 7,360 | 7,360 |
| 4 | 1.2.1 | 后台数据库设计 | manual | 5d | 2018-11-23 A | 2018-11-29 A |  | 100% |  |  |  |  | 数据库设计人员 | 40h | 40h | 800 | 800 |
| 5 | 1.2.2 | **前端页面设计** |  | 24d | 2018-11-21 A | 2018-12-24 A |  | 100% |  |  |  |  |  | 220h | 220h | 3,840 | 3,840 |
| 6 | 1.2.2.1 | 注册登录页面 | manual | 1d | 2018-11-21 A | 2018-11-21 A |  | 100% |  |  |  |  | UI设计人员 | 8h | 8h | 160 | 160 |
| 7 | 1.2.2.2 | **首页** |  | 3d | 2018-11-22 A | 2018-11-26 A |  | 100% |  |  |  |  | 前端开发人员1 | 29h | 29h | 480 | 480 |
| 8 | 1.2.2.2.1 | 每日推荐 | manual | 2d | 2018-11-22 A | 2018-11-23 A |  | 100% |  |  |  |  |  | 2h | 2h |  |  |
| 9 | 1.2.2.2.2 | 发布 | manual | 2d | 2018-11-24 A | 2018-11-26 A |  | 100% |  |  |  |  |  | 3h | 3h |  |  |
| 10 | 1.2.2.3 | **视野** |  | 8d | 2018-11-27 A | 2018-12-06 A |  | 100% |  |  |  |  | UI设计人员 | 72h | 72h | 1,280 | 1,280 |
| 11 | 1.2.2.3.1 | **分类** |  | 8d | 2018-11-27 A | 2018-12-06 |  | 100% |  |  | 2018-12-04 |  |  | 8h | 8h |  |  |
| 12 | 1.2.2.3.1.1 | 精选 | manual | 1d | 2018-11-27 A | 2018-11-27 A |  | 100% |  |  |  |  |  | 1h | 1h |  |  |
| 13 | 1.2.2.3.1.2 | 随笔 | manual | 1d | 2018-11-28 A | 2018-11-28 A |  | 100% |  |  |  |  |  | 1h | 1h |  |  |
| 14 | 1.2.2.3.1.3 | 情感 | manual | 1d | 2018-11-29 A | 2018-11-29 A |  | 100% |  |  |  |  |  | 1h | 1h |  |  |
| 15 | 1.2.2.3.1.4 | 励志 | manual | 1d | 2018-11-30 A | 2018-11-30 A |  | 100% |  |  |  |  |  | 1h | 1h |  |  |
| 16 | 1.2.2.3.1.5 | 美食 | manual | 1d | 2018-12-01 A | 2018-12-01 A |  | 100% |  |  |  |  |  | 1h | 1h |  |  |
| 17 | 1.2.2.3.1.6 | 旅行 | manual | 1d | 2018-12-02 A | 2018-12-02 A |  | 100% |  |  |  |  |  | 1h | 1h |  |  |
| 18 | 1.2.2.3.1.7 | 音乐 | manual | 1d | 2018-12-03 A | 2018-12-03 A |  | 100% |  |  |  |  |  | 1h | 1h |  |  |
| 19 | 1.2.2.3.1.8 | 影视 | manual | 1d | 2018-12-04 A | 2018-12-04 A |  | 100% |  |  |  |  |  | 1h | 1h |  |  |
| 20 | 1.2.2.4 | **消息** |  | 2d | 2018-12-07 A | 2018-12-10 A |  | 100% |  |  |  |  | 前端开发人员1 | 20h | 20h | 320 | 320 |
| 21 | 1.2.2.4.1 | 通知 | manual | 2d | 2018-12-07 A | 2018-12-08 A |  | 100% |  |  |  |  |  | 2h | 2h |  |  |
| 22 | 1.2.2.4.2 | 私信 | manual | 2d | 2018-12-09 A | 2018-12-10 A |  | 100% |  |  |  |  |  | 2h | 2h |  |  |
| 23 | 1.2.2.5 | **我** |  | 10d | 2018-12-11 A | 2018-12-24 A |  | 100% |  |  |  |  | 前端开发人员2 | 91h | 91h | 1,600 | 1,600 |
| 24 | 1.2.2.5.1 | 我的收藏 | manual | 2d | 2018-12-11 A | 2018-12-12 A |  | 100% |  |  |  |  |  | 2h | 2h |  |  |
| 25 | 1.2.2.5.2 | 我的关注 | manual | 2d | 2018-12-13 A | 2018-12-14 A |  | 100% |  |  |  |  |  | 2h | 2h |  |  |
| 26 | 1.2.2.5.3 | 我的兴趣 | manual | 2d | 2018-12-15 A | 2018-12-17 A |  | 100% |  |  |  |  |  | 3h | 3h |  |  |
| 27 | 1.2.2.5.4 | 设置 | manual | 2d | 2018-12-17 A | 2018-12-18 A |  | 100% |  |  |  |  |  | 2h | 2h |  |  |
| 28 | 1.2.2.5.5 | 个人主页 | manual | 2d | 2018-12-19 A | 2018-12-20 A |  | 100% |  |  |  |  |  | 2h | 2h |  |  |

| ID | WBS | Task | Type | Duration | Start | Finish | Predecessors | Complete | Remaining | Resources | Work | Actual work | Cost | Actual cost |
| --- | --- | --- | --- | --- | --- | --- | --- | --- | --- | --- | --- | --- | --- | --- |
| 29 | 1.2.3 | **后台页面设计** |  | 15d | 2018-11-22 A | 2018-12-12 A |  | 100% |  | 后台开发人员1 | 136h | 136h | 2,720 | 2,720 |
| 30 | 1.2.3.1 | 后台登录界面 | manual | 2d | 2018-11-22 A | 2018-11-23 A |  | 100% |  |  |  |  |  |  |
| 31 | 1.2.3.2 | 后台首页界面 | manual | 2d | 2018-11-24 A | 2018-11-26 A |  | 100% |  |  |  |  |  |  |
| 32 | 1.2.3.3 | 后台用户管理界面 | manual | 2d | 2018-11-27 A | 2018-11-28 A |  | 100% |  | 后台开发人员2 | 16h | 16h | 320 | 320 |
| 33 | 1.2.3.4 | 后台文章管理界面 | manual | 2d | 2018-11-29 A | 2018-11-30 A |  | 100% |  |  |  |  |  |  |
| 34 | 1.2.3.5 | 后台评论管理页面 | manual | 2d | 2018-12-01 A | 2018-12-03 A |  | 100% |  |  |  |  |  |  |
| 35 | 1.2.3.6 | 后台权限管理页面 | manual | 2d | 2018-12-04 A | 2018-12-05 A |  | 100% |  |  |  |  |  |  |
| 36 | 1.2.3.7 | 后台系统设置-平台信息页面 | manual | 2d | 2018-12-06 A | 2018-12-07 A |  | 100% |  |  |  |  |  |  |
| 37 | 1.3 | **项目监控** |  | 4d | 2018-12-01 | 2018-12-05 |  |  |  | 项目经理 | 36h |  | 640 |  |
| 38 | 1.3.1 | 各项指标监控 | manual | 1d | 2018-12-01 | 2018-12-01 |  |  |  |  | 1h |  |  |  |
| 39 | 1.3.2 | 监控评审 | manual | 1d | 2018-12-02 | 2018-12-02 |  |  |  |  | 1h |  |  |  |
| 40 | 1.3.3 | 变更评审 | manual | 1d | 2018-12-03 | 2018-12-03 |  |  |  |  | 1h |  |  |  |
| 41 | 1.3.4 | 例会 | manual | 1d | 2018-12-04 | 2018-12-04 |  |  |  |  | 1h |  |  |  |
| 42 | 1.4 | **管理干系人** |  | 3d | 2018-11-20 | 2018-11-22 |  |  |  | 测试人员; 项目经理 | 51h |  | 960 |  |
| 43 | 1.4.1 | 发布项目信息 | manual | 1d | 2018-11-20 | 2018-11-20 |  |  |  |  | 1h |  |  |  |
| 44 | 1.4.2 | 报告监控指标 | manual | 1d | 2018-11-21 | 2018-11-21 |  |  |  |  | 1h |  |  |  |
| 45 | 1.4.3 | 干系人沟通 | manual | 1d | 2018-11-22 | 2018-11-22 |  |  |  |  | 1h |  |  |  |
| 46 | 1.5 | **团队建设** |  | 7d | 2019-01-22 | 2019-01-30 |  |  |  | 项目经理 | 61h |  | 1,120 |  |
| 47 | 1.5.1 | 培训 | manual | 3d | 2019-01-22 | 2019-01-24 |  |  |  |  | 1h |  |  |  |
| 48 | 1.5.2 | 娱乐活动 | manual | 1d | 2019-01-25 | 2019-01-25 |  |  |  |  | 1h |  |  |  |
| 49 | 1.5.3 | 沟通 | manual | 1d | 2019-01-26 | 2019-01-26 |  |  |  |  | 1h |  |  |  |
| 50 | 1.5.4 | 采购 | manual | 1d | 2019-01-27 | 2019-01-27 |  |  |  |  | 1h |  |  |  |
| 51 | 1.5.5 | 项目验收 | manual | 1d | 2019-01-28 | 2019-01-28 |  |  |  |  | 1h |  |  |  |
| 52 | 2 | **收尾** |  | 3d | 2019-01-19 A | 2019-01-22 | 1 | 80% | 0.6d | 测试人员 | 27h | 13.6h | 480 | 224 |
| 53 | 2.1 | 项目终验 | manual | 1d | 2019-01-19 A | 2019-01-19 A |  | 100% |  |  | 1h | 1h |  |  |
| 54 | 2.2 | 结束采购 | manual | 1d | 2019-01-20 A | 2019-01-20 A |  | 100% |  |  | 1h | 1h |  |  |
| 55 | 2.3 | 项目内部收尾 | manual | 1d | 2019-01-21 A | 2019-01-21 |  | 40% | 0.6d |  | 1h | 0.4h |  |  |

| ID | WBS | Task | Type | Duration | Start | Finish | Predecessors | Complete | Resources | Work | Actual work | Cost | Actual cost |
| --- | --- | --- | --- | --- | --- | --- | --- | --- | --- | --- | --- | --- | --- |
| 56 | 3 | **启动** |  | 6d | 2018-11-19 A | 2018-11-24 A |  | 100% | UI设计人员; 项目经理 | 105h | 105h | 1,920 | 1,920 |
| 57 | 3.1 | 组建核心团队 | manual | 1d | 2018-11-19 A | 2018-11-19 A |  | 100% |  | 1h | 1h |  |  |
| 58 | 3.2 | 干系人分析 | manual | 2d | 2018-11-20 A | 2018-11-21 A |  | 100% |  | 2h | 2h |  |  |
| 59 | 3.3 | 里程碑计划 | manual | 2d | 2018-11-21 A | 2018-11-22 A |  | 100% |  | 2h | 2h |  |  |
| 60 | 3.4 | 制定项目章程 | manual | 2d | 2018-11-22 A | 2018-11-23 A |  | 100% |  | 2h | 2h |  |  |
| 61 | 3.5 | 项目启动大会 | manual | 2d | 2018-11-23 A | 2018-11-24 A |  | 100% |  | 2h | 2h |  |  |
| 62 | 4 | **规划** |  | 9d | 2018-11-19 A | 2018-11-29 A | 56 | 100% | UI设计人员 | 83h | 83h | 1,440 | 1,440 |
| 63 | 4.1 | 范围规划 | manual | 2d | 2018-11-19 A | 2018-11-20 A |  | 100% |  | 2h | 2h |  |  |
| 64 | 4.2 | 时间规划 | manual | 2d | 2018-11-21 A | 2018-11-22 A |  | 100% |  | 2h | 2h |  |  |
| 65 | 4.3 | 质量规划 | manual | 2d | 2018-11-23 A | 2018-11-24 A |  | 100% |  | 2h | 2h |  |  |
| 66 | 4.4 | 成本规划 | manual | 2d | 2018-11-25 A | 2018-11-26 A |  | 100% |  | 2h | 2h |  |  |
| 67 | 4.5 | 人力资源规划 | manual | 1d | 2018-11-27 A | 2018-11-27 A |  | 100% |  | 1h | 1h |  |  |
| 68 | 4.6 | 沟通规划 | manual | 1d | 2018-11-28 A | 2018-11-28 A |  | 100% |  | 1h | 1h |  |  |
| 69 | 4.7 | 风险规划 | manual | 1d | 2018-11-29 A | 2018-11-29 A |  | 100% |  | 1h | 1h |  |  |
