Schedule from MS Project, 2009-11-16 to 2011-05-12, costs in ¥.
Microsoft

## Calendars

- 标准: Mon-Fri 08:00-12:00, 13:00-17:00; Sat-Sun off.

## Resources

| Resource | Rate |
| --- | --- |
| 项目经理 | 30 |
| UI专家 | 25 |
| 需求专家 | 25 |
| 设计专家 | 20 |
| 程序员 | 20 |
| 测试员 | 25 |

## Schedule

| ID | WBS | Task | Duration | Start | Finish | Predecessors | Total slack | Free slack | Constraint | Resources | Work | Cost | 总成本 | 直接成本 |
| --- | --- | --- | --- | --- | --- | --- | --- | --- | --- | --- | --- | --- | --- | --- |
| 1 | 1 | **启动** | 85.88d? | 2009-11-16 | 2010-03-15 |  | -156.37d | 0d |  |  | 160h | 4,600 | ￥5000.00 |  |
| 2 | 1.1 | 组建核心团队，UI专家 | 2d? | 2009-11-16 | 2009-11-23 |  | 314.88d | 0d |  | 项目经理; UI专家 | 16h | 440 |  | 440 |
| 3 | 1.2 | 干系人分析 | 1d | 2009-11-26 | 2009-11-26 | 2 | 312.99d | 0d |  | 项目经理 | 8h | 240 |  | 240 |
| 4 | 1.3 | 里程碑计划 | 6d | 2009-11-27 | 2009-12-09 | 3 | 312.99d | 10.12d |  | 项目经理 | 48h | 1,440 |  | 1440 |
| 5 | 1.4 | 制定项目章程 | 3d | 2010-02-26 | 2010-03-15 | 4 | 302.86d |  | start no earlier than 2009-12-24 | 项目经理 | 24h | 720 |  | 240 |
| 6 | 1.5 | 项目启动大会 | 5.12d | 2010-03-01 | 2010-03-11 |  | -231.25d | 0d | start no earlier than 2010-02-27 | 项目经理; 需求专家 | 64h | 1,760 |  | 880 |
| 7 | 2 | **规划** | 153.49d | 2010-03-12 | 2010-10-13 |  | -231.35d | 0d |  |  | 728h | 21,120 |  |  |
| 8 | 2.1 | **规划范围** | 17.38d | 2010-03-12 | 2010-04-06 |  | -231.25d | 0d |  |  | 168h | 4,480 |  |  |
| 9 | 2.1.1 | 制定需求说明书 | 4d | 2010-03-12 | 2010-03-17 | 6 | -231.25d | 0d | start no earlier than 2009-12-07 | 需求专家 | 32h | 800 |  | 200 |
| 10 | 2.1.2 | 界面设计 | 4d | 2010-03-18 | 2010-03-23 | 9 | -228.87d | 0d |  | UI专家 | 32h | 800 |  | 200 |
| 11 | 2.1.3 | 详细设计说明书 | 3d | 2010-03-18 | 2010-03-22 | 9 | -227.87d | 0d |  | 设计专家 | 24h | 480 |  | 160 |
| 12 | 2.1.4 | 范围说明书 | 3d | 2010-03-18 | 2010-03-26 | 9 | -231.25d | 0d |  | 项目经理 | 24h | 720 |  | 240 |
| 13 | 2.1.5 | 创建WBS | 2d | 2010-03-26 | 2010-03-30 | 11, 12, 10 | -231.25d | 0d | start no earlier than 2009-12-10 | 项目经理 | 16h | 480 |  | 240 |
| 14 | 2.1.6 | 形成范围基准 | 5d | 2010-03-30 | 2010-04-06 | 13 | -231.25d | 0d |  | 项目经理 | 40h | 1,200 |  |  |
| 15 | 2.2 | **规划时间** | 38.01d | 2010-04-09 | 2010-06-02 |  | -231.35d | 0d |  |  | 176h | 5,280 |  |  |
| 16 | 2.2.1 | 排列工作包顺序 | 5d | 2010-04-09 | 2010-04-22 | 14 | -231.25d | 0d |  | 项目经理 | 40h | 1,200 |  | 240 |
| 17 | 2.2.2 | 估算资源 | 5d | 2010-04-27 | 2010-05-11 | 16 | -229.23d | 0d | start no earlier than 2010-04-19 | 项目经理 | 40h | 1,200 |  | 240 |
| 18 | 2.2.3 | 估算持续时间 | 3d | 2010-05-06 | 2010-05-13 | 16 | -231.35d | 0d | finish no earlier than 2009-12-25 | 项目经理 | 24h | 720 |  | 240 |
| 19 | 2.2.4 | 制定进度计划 | 5d | 2010-05-13 | 2010-05-27 | 17, 18 | -231.35d | 0d |  | 项目经理 | 40h | 1,200 |  | 240 |
| 20 | 2.2.5 | 形成进度基准 | 4d | 2010-05-27 | 2010-06-02 | 19 | -231.35d | 0d |  | 项目经理 | 32h | 960 |  | 240 |
| 21 | 2.3 | **规划成本** | 17.25d | 2010-06-02 | 2010-06-25 |  | -231.35d | 0d |  |  | 80h | 2,400 |  |  |
| 22 | 2.3.1 | 项目成本估算 | 5d | 2010-06-02 | 2010-06-16 | 20 | -231.35d | 0d |  | 项目经理 | 40h | 1,200 |  | 240 |
| 23 | 2.3.2 | 项目预算 | 5d | 2010-06-16 | 2010-06-25 | 22 | -231.35d | 0d |  | 项目经理 | 40h | 1,200 |  | 240 |
| 24 | 2.4 | **规划人力资源** | 28.26d | 2010-06-28 | 2010-08-05 |  | -231.35d | 0d |  |  | 96h | 2,720 |  |  |
| 25 | 2.4.1 | 制定人力资源计划 | 4d | 2010-06-28 | 2010-07-22 | 23 | -231.35d | 0d |  | 项目经理 | 32h | 960 |  | 240 |
| 26 | 2.4.2 | 制定人员配备管理计划 | 5d | 2010-07-22 | 2010-08-05 | 25 | -231.35d | 0d |  | 项目经理; 需求专家 | 64h | 1,760 |  | 440 |

| ID | WBS | Task | Type | Duration | Start | Finish | Predecessors | Total slack | Free slack | Resources | Work | Cost | 直接成本 | 间接成本 |
| --- | --- | --- | --- | --- | --- | --- | --- | --- | --- | --- | --- | --- | --- | --- |
| 27 | 2.5 | **规划沟通** |  | 16.11d | 2010-08-05 | 2010-08-27 |  | -231.35d | 0d |  | 40h | 1,200 |  |  |
| 28 | 2.5.1 | 制定沟通管理计划 |  | 5d | 2010-08-05 | 2010-08-27 | 26 | -231.35d | 0d | 项目经理 | 40h | 1,200 | 240 |  |
| 29 | 2.6 | **规划采购** |  | 6d | 2010-08-27 | 2010-09-06 |  | -231.35d | 0d |  | 48h | 1,440 |  |  |
| 30 | 2.6.1 | 自制采购分析 |  | 3d | 2010-08-27 | 2010-09-01 | 28 | -231.35d | 0d | 项目经理 | 24h | 720 | 240 |  |
| 31 | 2.6.2 | 制定采购文件 |  | 3d | 2010-09-01 | 2010-09-06 | 30 | -231.35d | 0d | 项目经理 | 24h | 720 | 240 |  |
| 32 | 2.7 | **规划风险** |  | 27.11d | 2010-09-06 | 2010-10-13 |  | -231.35d | 0d |  | 120h | 3,600 |  |  |
| 33 | 2.7.1 | 识别风险 |  | 3d | 2010-09-06 | 2010-09-17 | 31 | -231.35d | 0d | 项目经理 | 24h | 720 | 240 |  |
| 34 | 2.7.2 | 风险分析 |  | 3d | 2010-09-17 | 2010-09-27 | 33 | -231.35d | 0d | 项目经理 | 24h | 720 | 240 |  |
| 35 | 2.7.3 | 制定风险登记册 |  | 5d | 2010-09-27 | 2010-10-07 | 34 | -231.35d | 0d | 项目经理 | 40h | 1,200 | 240 |  |
| 36 | 2.7.4 | 规划整合 |  | 4d | 2010-10-07 | 2010-10-13 | 35 | -231.35d | 0d | 项目经理 | 32h | 960 | 240 |  |
| 37 | 3 | **执行与监控** |  | 383.99d? | 2009-11-17 | 2011-05-09 |  | 3.75d |  |  | 4638.84h | 118,255.2 |  |  |
| 38 | 3.1 | 组建项目团队 |  | 5d | 2010-10-13 | 2010-10-26 | 36 | -231.35d | 0d | 项目经理 | 40h | 1,200 |  |  |
| 39 | 3.2 | **项目执行** |  | 364.99d? | 2009-12-14 | 2011-05-09 |  | -5d | 0d |  | 4310.84h | 108,415.2 |  |  |
| 40 | 3.2.1 | **用户模块** |  | 342.88d? | 2009-12-14 | 2011-04-06 |  | -5d | 0d |  | 4117.96h | 103,348.8 |  |  |
| 41 | 3.2.1.1 | **1.发布者部分** |  | 231.35d? | 2009-12-14 | 2010-11-02 |  | -91.61d | 0d |  | 1584h | 39,600 |  |  |
| 42 | 3.2.1.1.1 | **1.1注册登录** |  | 5d? | 2010-10-26 | 2010-11-02 | 38 | -231.35d | 0d |  | 88h | 2,200 |  |  |
| 43 | 3.2.1.1.1.1 | 1.1.1构建用户信息表 |  | 1d? | 2010-10-26 | 2010-10-27 |  | -231.35d | 0d | 程序员; 项目经理 | 16h | 400 |  | 400 |
| 44 | 3.2.1.1.1.2 | 1.1.2设计注册+登录页面 |  | 1d? | 2010-10-27 | 2010-10-28 | 43 | -231.35d | 0d | 程序员; 项目经理 | 16h | 400 |  | 400 |
| 45 | 3.2.1.1.1.3 | 1.1.3注册+登录页面处理的代码 |  | 1d? | 2010-10-28 | 2010-10-29 | 44 | -231.35d | 0d | 程序员; 项目经理 | 16h | 400 |  | 400 |
| 46 | 3.2.1.1.1.4 | 1.1.4单元测试 |  | 1d? | 2010-10-29 | 2010-11-01 | 45 | -231.35d | 0d | 程序员; 项目经理; 测试员 | 24h | 600 |  | 400 |
| 47 | 3.2.1.1.1.5 | 1.1.5文档编写 |  | 1d? | 2010-11-01 | 2010-11-02 | 46 | -231.35d | 0d | 程序员; 项目经理 | 16h | 400 |  | 400 |
| 48 | 3.2.1.1.2 | **1.2发布任务** |  | 53.88d | 2009-12-14 | 2010-02-25 | 42 | 0d |  |  | 968h | 24,200 |  |  |
| 49 | 3.2.1.1.2.1 | 1.2.1设计已发布任务列表页面 | manual | 1d | 2009-12-14 | 2009-12-15 |  |  |  | 程序员; 项目经理 | 16h | 400 |  | 400 |
| 50 | 3.2.1.1.2.2 | 1.2.2已发布任务列表代码构成 | manual | 1d | 2009-12-15 | 2009-12-16 | 49 |  |  | 程序员; 项目经理 | 16h | 400 |  | 400 |
| 51 | 3.2.1.1.2.3 | 1.2.3设计发布任务页面 | manual | 1d | 2009-12-14 | 2009-12-15 |  |  |  | 程序员; 项目经理 | 16h | 400 |  | 400 |
| 52 | 3.2.1.1.2.4 | 1.2.4发布页面代码构成 | manual | 1d | 2009-12-15 | 2009-12-16 | 51 |  |  | 程序员; 项目经理 | 16h | 400 |  | 400 |
| 53 | 3.2.1.1.2.5 | 1.2.5设计发布完成页面 | manual | 1d | 2009-12-14 | 2009-12-15 |  |  |  | 程序员; 项目经理 | 16h | 400 |  | 400 |
| 54 | 3.2.1.1.2.6 | 1.2.6发布完成代码构成 | manual | 1d | 2009-12-15 | 2009-12-16 | 53 |  |  | 程序员; 项目经理 | 16h | 400 |  | 400 |
| 55 | 3.2.1.1.2.7 | 1.2.7设计取消任务页面 | manual | 1d | 2009-12-14 | 2009-12-15 |  |  |  | 程序员; 项目经理 | 16h | 400 |  | 400 |
| 56 | 3.2.1.1.2.8 | 1.2.8取消任务代码构成 | manual | 1d | 2009-12-15 | 2009-12-16 | 55 |  |  | 程序员; 项目经理 | 16h | 400 |  | 400 |
| 57 | 3.2.1.1.2.9 | 1.2.9单元测试 | manual | 1d | 2009-12-16 | 2009-12-17 | 56, 54, 52, 50 |  |  | 程序员; 项目经理; 测试员 | 24h | 600 |  | 400 |
| 58 | 3.2.1.1.2.10 | 1.2.10文档编写 | manual | 51d | 2009-12-17 | 2010-02-25 | 57 |  |  | 程序员; 项目经理 | 816h | 20,400 |  | 400 |

| ID | WBS | Task | Type | Duration | Start | Finish | Predecessors | Total slack | Resources | Work | Cost | 间接成本 |
| --- | --- | --- | --- | --- | --- | --- | --- | --- | --- | --- | --- | --- |
| 59 | 3.2.1.1.3 | **1.3客户交流** |  | 0.25d | 2010-02-25 | 2010-02-26 | 48 | 0d |  | 168h | 4,200 |  |
| 60 | 3.2.1.1.3.1 | 1.3.1设计好友列表页面 | manual | 1d | 2010-02-25 | 2010-02-26 |  |  | 程序员; 项目经理 | 16h | 400 | 400 |
| 61 | 3.2.1.1.3.2 | 1.3.2好友列表代码构成 | manual | 1d | 2010-02-25 | 2010-02-26 |  |  | 程序员; 项目经理 | 16h | 400 | 400 |
| 62 | 3.2.1.1.3.3 | 1.3.3设计发送信息页面 | manual | 1d | 2010-02-25 | 2010-02-26 |  |  | 程序员; 项目经理 | 16h | 400 | 400 |
| 63 | 3.2.1.1.3.4 | 1.3.4发送信息代码构成 | manual | 1d | 2010-02-25 | 2010-02-26 |  |  | 程序员; 项目经理 | 16h | 400 | 400 |
| 64 | 3.2.1.1.3.5 | 1.3.5设计系统信息接收页面 | manual | 1d | 2010-02-25 | 2010-02-26 |  |  | 程序员; 项目经理 | 16h | 400 | 400 |
| 65 | 3.2.1.1.3.6 | 1.3.6系统信息接收代码构成 | manual | 1d | 2010-02-25 | 2010-02-26 |  |  | 程序员; 项目经理 | 16h | 400 | 400 |
| 66 | 3.2.1.1.3.7 | 1.3.7设计好友信息列表页面 | manual | 1d | 2010-02-25 | 2010-02-26 |  |  | 程序员; 项目经理 | 16h | 400 | 400 |
| 67 | 3.2.1.1.3.8 | 1.3.8好友信息列表代码构成 | manual | 1d | 2010-02-25 | 2010-02-26 |  |  | 程序员; 项目经理 | 16h | 400 | 400 |
| 68 | 3.2.1.1.3.9 | 1.3.9单元测试 | manual | 1d | 2010-02-25 | 2010-02-26 |  |  | 程序员; 项目经理; 测试员 | 24h | 600 | 400 |
| 69 | 3.2.1.1.3.10 | 1.3.10文档编写 | manual | 1d | 2010-02-25 | 2010-02-26 |  |  | 程序员; 项目经理 | 16h | 400 | 400 |
| 70 | 3.2.1.1.4 | **1.4资金汇入支出** |  | 1d | 2010-02-26 | 2010-03-01 | 59 | 0d |  | 200h | 5,000 |  |
| 71 | 3.2.1.1.4.1 | 1.4.1设计钱包页面 | manual | 1d | 2010-02-26 | 2010-03-01 |  |  | 程序员; 项目经理 | 16h | 400 | 400 |
| 72 | 3.2.1.1.4.2 | 1.4.2钱包代码构成 | manual | 1d | 2010-02-26 | 2010-03-01 |  |  | 程序员; 项目经理 | 16h | 400 | 400 |
| 73 | 3.2.1.1.4.3 | 1.4.3设计添加信用卡页面 | manual | 1d | 2010-02-26 | 2010-03-01 |  |  | 程序员; 项目经理 | 16h | 400 | 400 |
| 74 | 3.2.1.1.4.4 | 1.4.4添加信用卡代码构成 | manual | 1d | 2010-02-26 | 2010-03-01 |  |  | 程序员; 项目经理 | 16h | 400 | 400 |
| 75 | 3.2.1.1.4.5 | 1.4.5设计充值页面 | manual | 1d | 2010-02-26 | 2010-03-01 |  |  | 程序员; 项目经理 | 16h | 400 | 400 |
| 76 | 3.2.1.1.4.6 | 1.4.6充值代码构成 | manual | 1d | 2010-02-26 | 2010-03-01 |  |  | 程序员; 项目经理 | 16h | 400 | 400 |
| 77 | 3.2.1.1.4.7 | 1.4.7设计查看余额页面 | manual | 1d | 2010-02-26 | 2010-03-01 |  |  | 程序员; 项目经理 | 16h | 400 | 400 |
| 78 | 3.2.1.1.4.8 | 1.4.8查看余额代码构成 | manual | 1d | 2010-02-26 | 2010-03-01 |  |  | 程序员; 项目经理 | 16h | 400 | 400 |
| 79 | 3.2.1.1.4.9 | 1.4.9设计资金转出页面 | manual | 1d | 2010-02-26 | 2010-03-01 |  |  | 程序员; 项目经理 | 16h | 400 | 400 |
| 80 | 3.2.1.1.4.10 | 1.4.10资金转出代码构成 | manual | 1d | 2010-02-26 | 2010-03-01 |  |  | 程序员; 项目经理 | 16h | 400 | 400 |
| 81 | 3.2.1.1.4.11 | 1.4.11单元测试 | manual | 1d | 2010-02-26 | 2010-03-01 |  |  | 程序员; 项目经理; 测试员 | 24h | 600 | 400 |
| 82 | 3.2.1.1.4.12 | 1.4.12文档编写 | manual | 1d | 2010-02-26 | 2010-03-01 |  |  | 程序员; 项目经理 | 16h | 400 | 400 |

| ID | WBS | Task | Type | Duration | Start | Finish | Predecessors | Total slack | Free slack | Constraint | Resources | Work | Cost | 间接成本 | 直接成本 |
| --- | --- | --- | --- | --- | --- | --- | --- | --- | --- | --- | --- | --- | --- | --- | --- |
| 83 | 3.2.1.1.5 | **1.5个人主页** |  | 1d | 2010-03-01 | 2010-03-02 | 70 | 0d |  |  |  | 136h | 3,400 |  |  |
| 84 | 3.2.1.1.5.1 | 1.5.1设计个人主页页面 | manual | 1d | 2010-03-01 | 2010-03-02 |  |  |  |  | 程序员; 项目经理 | 16h | 400 | 400 |  |
| 85 | 3.2.1.1.5.2 | 1.5.2个人主页代码实现 | manual | 1d | 2010-03-01 | 2010-03-02 |  |  |  |  | 程序员; 项目经理 | 16h | 400 | 400 |  |
| 86 | 3.2.1.1.5.3 | 1.5.3设计个人信息修改页面 | manual | 1d | 2010-03-01 | 2010-03-02 |  |  |  |  | 程序员; 项目经理 | 16h | 400 | 400 |  |
| 87 | 3.2.1.1.5.4 | 1.5.4个人信息修改代码构成 | manual | 1d | 2010-03-01 | 2010-03-02 |  |  |  |  | 程序员; 项目经理 | 16h | 400 | 400 |  |
| 88 | 3.2.1.1.5.5 | 1.5.5设计上传头像页面 | manual | 1d | 2010-03-01 | 2010-03-02 |  |  |  |  | 程序员; 项目经理 | 16h | 400 | 400 |  |
| 89 | 3.2.1.1.5.6 | 1.5.6上传头像代码构成 | manual | 1d | 2010-03-01 | 2010-03-02 |  |  |  |  | 程序员; 项目经理 | 16h | 400 | 400 |  |
| 90 | 3.2.1.1.5.7 | 1.5.7单元测试 |  | 1d | 2010-03-01 | 2010-03-02 |  | 80.61d |  | start no earlier than 2009-11-16 | 测试员; 程序员; 项目经理 | 24h | 600 | 400 |  |
| 91 | 3.2.1.1.5.8 | 1.5.8文档编写 | manual | 1d | 2010-03-01 | 2010-03-02 |  |  |  |  | 程序员; 项目经理 | 16h | 400 | 400 |  |
| 92 | 3.2.1.1.6 | 1.6总结测试 |  | 3d | 2010-03-02 | 2010-03-05 | 83 | 80.61d | 0d |  | 测试员 | 24h | 600 |  |  |
| 93 | 3.2.1.2 | **2.接收者部分** |  | 278.75d | 2010-03-05 | 2011-03-30 |  | 30.86d |  |  |  | 2493.96h | 62,748.8 |  |  |
| 94 | 3.2.1.2.1 | **2.1注册登录** |  | 91.25d | 2010-03-05 | 2010-07-12 | 92 | 76.61d | 0d |  |  | 200h | 5,160 |  |  |
| 95 | 3.2.1.2.1.1 | 2.1.1构建用户信息表 |  | 3.25d | 2010-03-05 | 2010-03-22 |  | 156.74d |  |  | 程序员; 项目经理 | 26.04h | 701.2 |  | 400 |
| 96 | 3.2.1.2.1.2 | 2.1.2设计注册+登录页面 |  | 4.75d | 2010-03-08 | 2010-07-01 |  | 84d |  |  | 程序员; 项目经理 | 37.96h | 1,058.8 |  | 400 |
| 97 | 3.2.1.2.1.3 | 2.1.3注册+登录页面处理的代码 |  | 3d | 2010-07-01 | 2010-07-06 |  | 81d |  |  | 程序员; 项目经理 | 48h | 1,200 |  | 400 |
| 98 | 3.2.1.2.1.4 | 2.1.4单元测试 |  | 3d | 2010-03-05 | 2010-07-06 |  | 80.61d |  |  | 程序员; 项目经理; 测试员 | 24h | 600 |  | 400 |
| 99 | 3.2.1.2.1.5 | 2.1.5文档编写 |  | 4d | 2010-07-06 | 2010-07-12 |  | 76.61d |  |  | 程序员; 项目经理 | 64h | 1,600 |  | 400 |
| 100 | 3.2.1.2.2 | **2.2发布任务** |  | 114.75d | 2010-07-12 | 2010-12-20 | 94 | 71.61d | 0d |  |  | 696h | 17,400 |  |  |
| 101 | 3.2.1.2.2.1 | 2.2.1设计已发布任务列表页面 |  | 7.12d | 2010-07-15 | 2010-08-16 |  | 160.87d |  |  | 程序员; 项目经理 | 64h | 1,600 |  | 400 |
| 102 | 3.2.1.2.2.2 | 2.2.2已发布任务列表代码构成 |  | 4d | 2010-11-10 | 2010-11-16 |  | 94.86d |  |  | 程序员; 项目经理 | 64h | 1,600 |  | 400 |
| 103 | 3.2.1.2.2.3 | 2.2.3设计接收任务页面 |  | 6d | 2010-08-04 | 2010-08-23 |  | 156.24d |  |  | 程序员; 项目经理 | 64h | 1,600 |  | 400 |
| 104 | 3.2.1.2.2.4 | 2.2.4接收页面代码构成 |  | 6d | 2010-07-19 | 2010-11-19 |  | 91.98d |  |  | 程序员; 项目经理 | 48h | 1,200 |  | 400 |
| 105 | 3.2.1.2.2.5 | 2.2.5设计接收完成页面 |  | 8d | 2010-07-20 | 2010-11-25 |  | 87.98d |  |  | 程序员; 项目经理 | 64h | 1,600 |  | 400 |
| 106 | 3.2.1.2.2.6 | 2.2.6接收完成代码构成 |  | 4d | 2010-12-07 | 2010-12-10 |  | 76.86d |  |  | 程序员; 项目经理 | 64h | 1,600 |  | 400 |
| 107 | 3.2.1.2.2.7 | 2.2.7设计放弃任务页面 |  | 8d | 2010-07-20 | 2010-11-26 |  | 86.86d |  |  | 程序员; 项目经理 | 64h | 1,600 |  | 400 |
| 108 | 3.2.1.2.2.8 | 2.2.8放弃任务代码构成 |  | 8d | 2010-07-21 | 2010-12-06 |  | 80.86d |  |  | 程序员; 项目经理 | 64h | 1,600 |  | 400 |
| 109 | 3.2.1.2.2.9 | 2.2.9单元测试 |  | 7.25d | 2010-07-12 | 2010-12-13 |  | 76.61d |  |  | 程序员; 项目经理; 测试员 | 120h | 3,000 |  | 400 |
| 110 | 3.2.1.2.2.10 | 2.2.10文档编写 |  | 5d | 2010-12-13 | 2010-12-20 |  | 71.61d |  |  | 程序员; 项目经理 | 80h | 2,000 |  | 400 |

| ID | WBS | Task | Duration | Start | Finish | Predecessors | Total slack | Free slack | Resources | Work | Cost | 直接成本 |
| --- | --- | --- | --- | --- | --- | --- | --- | --- | --- | --- | --- | --- |
| 111 | 3.2.1.2.3 | **2.3客户交流** | 37d | 2010-12-20 | 2011-02-09 | 100 | 66.61d |  |  | 600h | 15,000 |  |
| 112 | 3.2.1.2.3.1 | 2.3.1设计好友列表页面 | 5d | 2011-02-02 | 2011-02-09 |  | 66.61d |  | 程序员; 项目经理 | 80h | 2,000 | 400 |
| 113 | 3.2.1.2.3.2 | 2.3.2好友列表代码构成 | 8.74d | 2011-01-03 | 2011-02-01 |  | 71.88d |  | 程序员; 项目经理 | 80h | 2,000 | 400 |
| 114 | 3.2.1.2.3.3 | 2.3.3设计发送信息页面 | 7.88d | 2011-01-03 | 2011-01-18 |  | 82.73d |  | 程序员; 项目经理 | 64h | 1,600 | 400 |
| 115 | 3.2.1.2.3.4 | 2.3.4发送信息代码构成 | 3.39d | 2010-12-24 | 2011-02-01 |  | 72d |  | 程序员; 项目经理 | 48h | 1,200 | 400 |
| 116 | 3.2.1.2.3.5 | 2.3.5设计系统信息接收页面 | 4.13d | 2010-12-20 | 2011-02-02 |  | 71.75d |  | 程序员; 项目经理 | 64h | 1,600 | 400 |
| 117 | 3.2.1.2.3.6 | 2.3.6系统信息接收代码构成 | 4.52d | 2010-12-27 | 2011-02-02 |  | 71.61d |  | 程序员; 项目经理 | 64h | 1,600 | 400 |
| 118 | 3.2.1.2.3.7 | 2.3.7设计好友信息列表页面 | 3.65d | 2010-12-27 | 2011-02-01 |  | 72.27d |  | 程序员; 项目经理 | 48h | 1,200 | 400 |
| 119 | 3.2.1.2.3.8 | 2.3.8好友信息列表代码构成 | 3.78d | 2010-12-20 | 2011-02-02 |  | 71.61d |  | 程序员; 项目经理 | 48h | 1,200 | 400 |
| 120 | 3.2.1.2.3.9 | 2.3.9单元测试 | 4d | 2010-12-20 | 2011-01-03 |  | 93.61d |  | 程序员; 项目经理; 测试员 | 56h | 1,400 | 600 |
| 121 | 3.2.1.2.3.10 | 2.3.10文档编写 | 3d | 2011-01-20 | 2011-01-24 |  | 77.86d |  | 程序员; 项目经理 | 48h | 1,200 |  |
| 122 | 3.2.1.2.4 | **2.4资金汇入支出** | 140.99d | 2010-03-23 | 2010-10-05 | 11 | 20.39d | 0d |  | 567h | 14,330 |  |
| 123 | 3.2.1.2.4.1 | 2.4.1设计钱包页面 | 3d | 2010-08-06 | 2010-08-10 |  | 60.38d |  | 程序员; 项目经理 | 48h | 1,200 | 400 |
| 124 | 3.2.1.2.4.2 | 2.4.2钱包代码构成 | 3d | 2010-08-11 | 2010-08-13 |  | 57.38d |  | 程序员; 项目经理 | 48h | 1,200 | 400 |
| 125 | 3.2.1.2.4.3 | 2.4.3设计添加信用卡页面 | 3d | 2010-09-30 | 2010-10-05 |  | 20.39d |  | 程序员; 项目经理 | 48h | 1,200 | 400 |
| 126 | 3.2.1.2.4.4 | 2.4.4添加信用卡代码构成 | 3d | 2010-06-11 | 2010-06-15 |  | 100.38d |  | 程序员; 项目经理 | 48h | 1,200 | 400 |
| 127 | 3.2.1.2.4.5 | 2.4.5设计充值页面 | 3d | 2010-03-29 | 2010-08-03 |  | 66.12d |  | 程序员; 项目经理 | 31h | 850 | 400 |
| 128 | 3.2.1.2.4.6 | 2.4.6充值代码构成 | 3d | 2010-03-25 | 2010-06-11 |  | 102.5d |  | 程序员; 项目经理 | 48h | 1,200 | 400 |
| 129 | 3.2.1.2.4.7 | 2.4.7设计查看余额页面 | 5.88d | 2010-03-26 | 2010-04-16 |  | 143d |  | 程序员; 项目经理 | 48h | 1,200 | 400 |
| 130 | 3.2.1.2.4.8 | 2.4.8查看余额代码构成 | 6d | 2010-03-30 | 2010-04-26 |  | 136.5d |  | 程序员; 项目经理 | 48h | 1,200 | 400 |
| 131 | 3.2.1.2.4.9 | 2.4.9设计资金转出页面 | 3d | 2010-09-06 | 2010-09-09 |  | 38.63d |  | 程序员; 项目经理 | 48h | 1,200 | 400 |
| 132 | 3.2.1.2.4.10 | 2.4.10资金转出代码构成 | 3d | 2010-09-20 | 2010-09-22 |  | 29.38d |  | 程序员; 项目经理 | 48h | 1,200 | 400 |
| 133 | 3.2.1.2.4.11 | 2.4.11单元测试 | 4.74d | 2010-03-23 | 2010-06-17 |  | 98.5d |  | 程序员; 项目经理; 测试员 | 72h | 1,800 | 400 |
| 134 | 3.2.1.2.4.12 | 2.4.12文档编写 | 4d | 2010-04-05 | 2010-06-23 |  | 95.13d |  | 程序员; 项目经理 | 32h | 880 | 400 |

| ID | WBS | Task | Duration | Start | Finish | Predecessors | Total slack | Free slack | Resources | Work | Cost | 直接成本 | 间接成本 |
| --- | --- | --- | --- | --- | --- | --- | --- | --- | --- | --- | --- | --- | --- |
| 135 | 3.2.1.2.5 | **2.5个人主页** | 122.01d | 2010-10-05 | 2011-03-24 | 122 | 0d |  |  | 398.96h | 10,058.8 |  |  |
| 136 | 3.2.1.2.5.1 | 2.5.1设计个人主页页面 | 4d | 2010-10-06 | 2010-10-20 |  | 111.01d |  | 程序员; 项目经理 | 48h | 1,200 | 400 |  |
| 137 | 3.2.1.2.5.2 | 2.5.2个人主页代码实现 | 3.88d | 2010-10-06 | 2011-02-15 |  | 27.13d |  | 程序员; 项目经理 | 31h | 700 | 400 |  |
| 138 | 3.2.1.2.5.3 | 2.5.3设计个人信息修改页面 | 5.88d | 2010-10-08 | 2011-02-15 |  | 27.14d |  | 程序员; 项目经理 | 48h | 1,200 | 400 |  |
| 139 | 3.2.1.2.5.4 | 2.5.4个人信息修改代码构成 | 4d | 2010-10-05 | 2011-02-24 |  | 20.39d |  | 程序员; 项目经理 | 32h | 880 | 400 |  |
| 140 | 3.2.1.2.5.5 | 2.5.5设计上传头像页面 | 4d | 2010-10-06 | 2011-02-10 |  | 30.02d |  | 程序员; 项目经理 | 31.96h | 878.8 | 400 |  |
| 141 | 3.2.1.2.5.6 | 2.5.6上传头像代码构成 | 4d | 2011-03-14 | 2011-03-18 |  | 4d |  | 程序员; 项目经理 | 64h | 1,600 | 400 |  |
| 142 | 3.2.1.2.5.7 | 2.5.7单元测试 | 4d | 2011-03-21 | 2011-03-24 |  | 0d |  | 程序员; 项目经理; 测试员 | 96h | 2,400 | 400 |  |
| 143 | 3.2.1.2.5.8 | 2.5.8文档编写 | 3d | 2011-02-24 | 2011-03-01 |  | 17.39d |  | 程序员; 项目经理 | 48h | 1,200 | 400 |  |
| 144 | 3.2.1.2.6 | 2.6总结测试 | 4d | 2011-03-25 | 2011-03-30 | 135 | 0d |  | 测试员 | 32h | 800 | 200 | 500 |
| 145 | 3.2.1.3 | **3.投诉** | 5d | 2011-03-31 | 2011-04-06 |  | 0d |  |  | 40h | 1,000 |  |  |
| 146 | 3.2.1.3.1 | 总结测试 | 5d | 2011-03-31 | 2011-04-06 | 92, 144 | 0d |  | 测试员 | 40h | 1,000 | 200 | 500 |
| 147 | 3.2.2 | **管理员模块** | 22.11d | 2011-04-07 | 2011-05-09 |  | 3.75d |  |  | 192.88h | 5,066.4 |  |  |
| 148 | 3.2.2.1 | 处理用户投诉 | 3.12d | 2011-04-07 | 2011-04-14 | 146 | 3.75d | 0d | 项目经理; 程序员 | 24.96h | 668.8 | 400 |  |
| 149 | 3.2.2.2 | 更新布告栏 | 2.88d | 2011-04-14 | 2011-04-19 | 148 | 3.75d | 0d | 项目经理; 程序员 | 31h | 850 | 400 |  |
| 150 | 3.2.2.3 | 改变任务状态 | 4.37d | 2011-04-19 | 2011-04-26 | 149 | 3.75d | 0d | 项目经理; 程序员 | 48h | 1,200 | 400 |  |
| 151 | 3.2.2.4 | 扣除悬赏金 | 3.12d | 2011-04-26 | 2011-04-29 | 150 | 3.75d | 0d | 项目经理; 程序员 | 32.92h | 907.6 | 400 |  |
| 152 | 3.2.2.5 | 发放悬赏金 | 2d | 2011-04-29 | 2011-05-09 | 151 | 3.75d |  | 项目经理; 程序员 | 24h | 640 | 400 |  |
| 153 | 3.2.2.6 | 总结测试 | 4d | 2011-04-07 | 2011-04-12 | 146 | 21.86d |  | 测试员 | 32h | 800 | 200 | 500 |
| 154 | 3.3 | **项目监控** | 109.75d | 2009-12-04 | 2010-05-06 |  | 264.99d |  |  | 96h | 2,880 |  |  |
| 155 | 3.3.1 | 各项指标监控 | 3d | 2010-03-04 | 2010-03-09 |  | 306.99d |  | 项目经理 | 24h | 720 | 240 |  |
| 156 | 3.3.2 | 监控评审 | 3d | 2009-12-04 | 2010-03-10 |  | 306.24d |  | 项目经理 | 24h | 720 | 240 |  |
| 157 | 3.3.3 | 变更评审 | 3d | 2010-05-03 | 2010-05-06 |  | 264.99d |  | 项目经理 | 24h | 720 | 240 |  |
| 158 | 3.3.4 | 例会 | 3d | 2009-12-07 | 2010-04-22 |  | 275.61d |  | 项目经理 | 24h | 720 | 240 |  |

| ID | WBS | Task | Duration | Start | Finish | Predecessors | Total slack | Free slack | Resources | Work | Cost | 直接成本 |
| --- | --- | --- | --- | --- | --- | --- | --- | --- | --- | --- | --- | --- |
| 159 | 3.4 | **管理干系人** | 212.37d | 2009-11-19 | 2010-09-13 |  | 173.37d |  |  | 72h | 2,160 |  |
| 160 | 3.4.1 | 发布项目信息 | 3d | 2009-11-19 | 2009-11-25 |  | 173.37d | 0d | 项目经理 | 24h | 720 | 240 |
| 161 | 3.4.2 | 报告监控指标 | 3d | 2009-11-25 | 2010-07-28 | 160 | 173.37d | 0d | 项目经理 | 24h | 720 | 240 |
| 162 | 3.4.3 | 干系人沟通 | 3d | 2010-07-28 | 2010-09-13 | 3, 161 | 173.37d |  | 项目经理 | 24h | 720 | 240 |
| 163 | 3.5 | **团队建设** | 364.88d | 2009-11-17 | 2011-04-11 |  | 22.86d |  |  | 120h | 3,600 |  |
| 164 | 3.5.1 | 培训 | 3d | 2010-05-19 | 2011-02-21 |  | 58.37d |  | 项目经理 | 24h | 720 | 240 |
| 165 | 3.5.2 | 娱乐活动 | 3d | 2010-05-20 | 2011-02-23 |  | 56.37d |  | 项目经理 | 24h | 720 | 240 |
| 166 | 3.5.3 | 沟通 | 3d | 2009-11-17 | 2011-02-24 |  | 55.37d |  | 项目经理 | 24h | 720 | 240 |
| 167 | 3.5.4 | 采购 | 3d | 2010-05-21 | 2010-05-26 |  | 250.99d |  | 项目经理 | 24h | 720 | 240 |
| 168 | 3.5.5 | 项目收尾 | 3d | 2011-04-07 | 2011-04-11 | 92, 144, 146 | 0d |  | 项目经理 | 24h | 720 | 240 |
| 169 | 4 | **收尾** | 22.86d | 2011-04-12 | 2011-05-12 |  | 0d |  |  | 56h | 1,680 |  |
| 170 | 4.1 | 项目终检 | 3d | 2011-04-12 | 2011-05-03 | 168 | 0d |  | 项目经理 | 24h | 720 | 240 |
| 171 | 4.2 | 结束采购 | 2d | 2011-05-03 | 2011-05-05 | 170 | 0d |  | 项目经理 | 16h | 480 | 240 |
| 172 | 4.3 | 项目内部收尾 | 2d | 2011-05-05 | 2011-05-12 | 171 | 0d |  | 项目经理 | 16h | 480 | 240 |
